# CMA Redesign Build Phase

Schedule from MS Project, 2017-11-14 to 2018-05-11.
Rockwell Automation

## Calendars

- Standard: Mon-Fri 08:00-12:00, 13:00-17:00; Sat-Sun off. Exceptions (off unless hours are given): 2018-01-01 (New Year), 2018-01-26 (Republic Day), 2018-03-02 (Holi), 2018-05-01 (Maharastra Day).

## Resources

| Resource |
| --- |
| Project Manager |
| BI COE Analyst |
| BI COE Architect |
| BI COE Rapid Prototype Lead |
| BI COE Modeler |
| BI COE Engineer |
| IT |
| BI COE Business Lead |
| Rajesh Menon |
| VImala Jaganathan |
| Tracy Lee |
| Neo Tai |
| Bhagwan |
| Jai |
| Jai' |
| Res 4 |
| 30 |
| Res5 |
| .Net1 |
| .Net2 |
| .Net3 |
| .Net4 |
| .Net5 |
| ORA1 |
| ORA |
| >net3 |
| .Net2.Net4 |
| TEST1 |
| TEST2 |
| PM |
| PM1 |
| PM2 |
| Mon 5/7/18 |
| .Net 4 |
| Sanjeev |

## Schedule

| ID | WBS | Task | Type | Duration | Start | Finish | Predecessors | Total slack | Free slack | Constraint | Resources | Work | Text7 | Text12 | Text11 |
| --- | --- | --- | --- | --- | --- | --- | --- | --- | --- | --- | --- | --- | --- | --- | --- |
| 1 | 1 | **Control** |  | 125d | 2017-11-14 | 2018-05-11 |  | 0d |  |  |  | 1600h | No | yes |  |
| 2 | 1.1 | Manage project |  | 121d | 2017-11-14 | 2018-05-07 |  | 4d |  | finish no earlier than 2018-05-07 | PM1; PM2 | 500h | No | yes |  |
| 3 | 1.2 | Weekly project team meetings |  | 121d | 2017-11-14 | 2018-05-07 |  | 4d |  | finish no earlier than 2018-05-07 | PM1; PM2 | 500h | No | no |  |
| 4 | 1.3 | Weekly project status reports |  | 121d | 2017-11-20 | 2018-05-11 |  | 0d |  | start no earlier than 2017-11-20 | PM1; PM2 | 200h | No | no |  |
| 5 | 1.4 | Monthly stakeholder updates |  | 121d | 2017-11-14 | 2018-05-07 |  | 4d |  | finish no earlier than 2018-05-07 | PM1; PM2 | 200h | No | no |  |
| 6 | 1.5 | Identify and resolve issues and risks |  | 121d | 2017-11-20 | 2018-05-11 |  | 0d |  | start no earlier than 2017-11-20 | PM1; PM2 | 200h | No | yes |  |
| 7 | 2 | **Initiate** |  | 0.65d | 2017-11-20 | 2017-11-20 |  | 120.35d |  |  |  | 9h | No | yes |  |
| 8 | 2.1.5 | Update list of key stakeholders |  | 0.28d | 2017-11-20 | 2017-11-20 |  | 120.35d | 0d | start no earlier than 2017-11-20 | PM1 [88.9%]; PM2 [88.9%] | 4h | No | no | BI COE |
| 9 | 2.2 | Develop project org chart |  | 0.28d | 2017-11-20 | 2017-11-20 | 8 | 120.35d | 0d | start no earlier than 2017-11-20 | PM1 [88.9%]; PM2 [88.9%] | 4h | No | no | project |
| 10 | 2.1.6 | Build Project kick off | milestone | 0.08d | 2017-11-20 | 2017-11-20 | 9 | 120.35d | 0d | start no earlier than 2017-11-20 | PM1 [75%]; PM2 [75%] | 1h | No | yes |  |
| 11 | 2.4 | Project kick off meeting complete | milestone | 0d | 2017-11-20 | 2017-11-20 | 10 | 120.35d | 0d | start no earlier than 2017-11-20 | PM1; PM2 |  | No |  |  |
| 12 | 2.5 | Initiate complete | milestone | 0d | 2017-11-20 | 2017-11-20 | 8, 9, 11 | 120.35d |  | start no earlier than 2017-11-20 | PM1; PM2 |  | No | yes |  |
| 13 | 3 | **Plan** |  | 15d | 2017-11-20 | 2017-12-08 |  | 0d |  |  |  | 656h | No | yes |  |
| 14 | 3.1 | **Detailing Technical Design Document** |  | 15d | 2017-11-20 | 2017-12-08 |  | 0d |  |  |  | 576h | No |  |  |
| 15 | 3.1.1 | **Technical Specification** |  | 14d | 2017-11-20 | 2017-12-07 |  | 0d |  |  |  | 576h | No | no | project (some) |
| 16 | 3.1.1.1 | **CMA Application** |  | 14d | 2017-11-20 | 2017-12-07 |  | 0d |  |  |  | 576h |  |  |  |
| 17 | 3.1.1.1.1 | **Security Implementation** |  | 14d | 2017-11-20 | 2017-12-07 |  | 107d |  |  |  | 112h |  |  |  |
| 18 | 3.1.1.1.1.1 | Analysis of Security Implementation in CMA |  | 9d | 2017-11-20 | 2017-11-30 |  | 107d | 0d |  | .Net1 | 72h |  |  |  |
| 19 | 3.1.1.1.1.2 | Analysis of 'Reseller Access' role approvers for each BU to be assigned in GS3 |  | 5d | 2017-12-01 | 2017-12-07 | 18 | 107d |  |  | .Net1 | 40h |  |  |  |
| 20 | 3.1.1.1.2 | **Allocation Process** |  | 14d | 2017-11-20 | 2017-12-07 |  |  |  |  |  | 112h |  |  |  |
| 21 | 3.1.1.1.2.1 | Analysis on how to get billings and bookings from COSB |  | 2d | 2017-11-20 | 2017-11-21 |  | 107d | 0d |  | .Net2 | 16h |  |  |  |
| 22 | 3.1.1.1.2.2 | Analysis on how to get backlogs from Delivery Scoreboard |  | 2d | 2017-11-22 | 2017-11-23 | 21 | 107d | 0d |  | .Net2 | 16h |  |  |  |
| 23 | 3.1.1.1.2.3 | Analysis on how to retrieve POS data from GBL POS |  | 2d | 2017-11-24 | 2017-11-27 | 22 | 107d | 0d |  | .Net2 | 16h |  |  |  |
| 24 | 3.1.1.1.2.4 | Analysis on how to derive bookings for CMs defined in CMS as buying thru Distribution from OEM Mapping Rules and Resellers table |  | 2d | 2017-11-28 | 2017-11-29 | 23 | 107d | 0d |  | .Net2 | 16h |  |  |  |
| 25 | 3.1.1.1.2.5 | Analysis on how to derive bookings for CMs defined in CMS as buying thru Distribution from OEM Mapping Rules and Resellers table |  | 2d | 2017-11-30 | 2017-12-01 | 24 | 107d | 0d |  | .Net2 | 16h |  |  |  |
| 26 | 3.1.1.1.2.6 | Analysis on how to get the OEM Account Number if not available in OEM Mapping rules |  | 2d | 2017-12-04 | 2017-12-05 | 25 | 107d | 0d |  | .Net2 | 16h |  |  |  |
| 27 | 3.1.1.1.2.7 | Analysis on how to get the Customer/Reseller Org ID if not available in OEM Mapping rules |  | 2d | 2017-12-06 | 2017-12-07 | 26 | 107d |  |  | .Net2 | 16h |  |  |  |
| 28 | 3.1.1.1.3 | Historical Data Reorganization - DTO |  | 10d | 2017-11-20 | 2017-12-01 |  | 107d | 0d |  | .Net3 | 80h |  |  |  |
| 29 | 3.1.1.1.4 | CM Delete Process |  | 6d | 2017-11-20 | 2017-11-27 |  | 115d |  |  | .Net4 | 48h |  |  |  |

Notes:
- 2: Weekly tasks: / Ensure team has tracked time by Mon 10am / Progress project plans by Mon 5pm / Prepare weekly status report by Tue 5pm / Review and update risks and issues by Wed am / Analyze variances, update plan by Thu pm / Conduct project team meetings at least once per week / Monthly tasks: / Update financials (actuals and forecast) / Conduct project stakeholder status update meeting
- 8: Ask BI COE Business Lead to do this
- 10: Include: / key stakeholders from the Business Unit / BI COE Governance Lead / BI COE Portfolio Manager / BI COE Business Lead / BI COE Business Analysts / BI COE Architecture Lead / BI COE Architects to be assigned to this project / BI COE Delivery Lead / BI COE Analysts to be assigned to this project / BI COE Engineers to be assigned to this project
- 15: Defines data model of tables and fields and additional technical details

| ID | WBS | Task | Type | Duration | Start | Finish | Predecessors | Total slack | Free slack | Constraint | Resources | Work | Text7 | Text12 | Text11 |
| --- | --- | --- | --- | --- | --- | --- | --- | --- | --- | --- | --- | --- | --- | --- | --- |
| 30 | 3.1.1.1.5 | **Profit Center hierarchy** |  | 14d | 2017-11-20 | 2017-12-07 |  | 107d |  |  |  | 112h |  |  |  |
| 31 | 3.1.1.1.5.1 | Flexible to absorb changes to profit center hierarchy |  | 10d | 2017-11-20 | 2017-12-01 |  | 111d |  |  | .Net5 | 80h |  |  |  |
| 32 | 3.1.1.1.5.2 | Approval procedure for Business Unit with no code change |  | 4d | 2017-12-04 | 2017-12-07 | 28 | 107d |  |  | .Net4 | 32h |  |  |  |
| 33 | 3.1.1.1.6 | Database changes |  | 14d | 2017-11-20 | 2017-12-07 |  | 51d | 0d |  | ORA | 112h |  |  |  |
| 34 | 3.1.1.2 | APEX App Changes |  | 10d | 2017-11-20 | 2017-12-01 |  | 29.74d | 0d | start no earlier than 2017-11-20 |  |  |  |  |  |
| 35 | 3.1.1.3 | Analyzer App Changes |  | 10d | 2017-11-20 | 2017-12-01 |  | 111d |  | start no earlier than 2017-11-20 |  |  |  |  |  |
| 36 | 3.1.1.4 | TED Changes |  | 10d | 2017-11-20 | 2017-12-01 |  | 111d |  | start no earlier than 2017-11-20 |  |  |  |  |  |
| 37 | 3.1.2 | Review of Technical Spec | milestone | 5d | 2017-12-04 | 2017-12-08 | 34 | 29.74d | 0d | start no earlier than 2017-12-04 |  |  | No | yes |  |
| 38 | 3.3.7 | **Develop Test plan** |  | 10d | 2017-11-20 | 2017-12-01 |  | 49d |  |  |  | 80h | No | no | project (some) |
| 39 | 3.2.1 | Test Plan |  | 10d | 2017-11-20 | 2017-12-01 |  | 49d | 0d | start no earlier than 2017-11-20 | TEST1 | 80h | No | yes | project (some) |
| 40 | 4 | **Execute** |  | 107d? | 2017-12-04 | 2018-05-07 |  | 4d |  |  |  | 6446.08h | No | yes |  |
| 41 | 4.1 | **Build & Unit Test** |  | 62d | 2017-12-04 | 2018-03-01 |  | 49d |  |  |  | 4026.08h | No | no |  |
| 42 | 4.1.1 | Hand off to Build Team | milestone | 0d | 2017-12-08 | 2017-12-08 | 37 | 51d | 0d | start no earlier than 2017-11-24 |  |  |  |  |  |
| 43 | 4.1.2 | **CMA Application Changes** |  | 58d | 2017-12-08 | 2018-03-01 |  | 49d |  |  |  | 2664h |  |  |  |
| 44 | 4.1.2.1 | **Navigation Panel Changes** |  | 6d | 2017-12-11 | 2017-12-18 |  | 51d |  |  |  | 48h |  |  |  |
| 45 | 4.1.2.1.1 | Remove the Data Correction Section |  | 1.5d | 2017-12-11 | 2017-12-12 | 42 | 51d | 0d |  | .Net4 | 12h |  |  |  |
| 46 | 4.1.2.1.2 | **Data Entry Section** |  | 4.5d | 2017-12-12 | 2017-12-18 |  | 51d |  | start no earlier than 2017-11-20 |  | 36h |  |  |  |
| 47 | 4.1.2.1.2.1 | Create Allocation Rules |  | 1.5d | 2017-12-12 | 2017-12-13 | 45 | 51d | 0d |  | .Net4 | 12h |  |  |  |
| 48 | 4.1.2.1.2.2 | Download Allocation Rules / Conflict |  | 1.5d | 2017-12-14 | 2017-12-15 | 47 | 51d | 0d |  | .Net4 | 12h |  |  |  |
| 49 | 4.1.2.1.2.3 | Delete CM |  | 1.5d | 2017-12-15 | 2017-12-18 | 48 | 51d | 0d |  | .Net4 | 12h |  |  |  |
| 50 | 4.1.2.2 | **Security Implementation** |  | 40d | 2017-12-11 | 2018-02-06 |  | 51d |  |  |  | 320h |  |  |  |
| 51 | 4.1.2.2.1 | Detailed investigation and Setup of Reseller Access - Security role |  | 10d | 2017-12-11 | 2017-12-22 | 42 | 51d | 0d |  | .Net1 | 80h |  |  |  |
| 52 | 4.1.2.2.2 | Detailed investigation and Setup of Reseller Approver Roles for each BU |  | 10d | 2018-01-09 | 2018-01-22 | 53, 51 | 51d | 0d |  | .Net1 | 80h |  |  |  |
| 53 | 4.1.2.2.3 | Detailed investigation and Setup of Multi Industry Access |  | 10d | 2017-12-25 | 2018-01-08 | 51 | 51d | 0d |  | .Net1 | 80h |  |  |  |
| 54 | 4.1.2.2.4 | Alternate user territory |  | 10d | 2018-01-23 | 2018-02-06 | 52, 53 | 51d | 0d |  | .Net1 | 80h |  |  |  |

Notes:
- 37: Includes Architecture Design and Technical Spec
- 38: Defines plan to ensure that changes will be appropriately supported
- 39: Defines plan for testing activities and identifies test cases, test data, participants, expected results... / Test Results, which validates that data serves intended purposes as defined by requirements, must be tracked in Quality Center
- 41: key outcomes/ Complete development and Testing before giving it to User testing
- 44: [11/17/2017 2:43 PM] Kumamekar, Pritam: / Remove the Data Correction section / Data Entry Section / Add Create Allocation Rules option / This new option will allow the user to create or update rules especially for parts that do not have sales for the current month / Add Download Allocation Rules / Conflict option / This new option will allow the user to download allocation rules and rule conflicts based on the given criteria / Add Delete CM Data option / This option will displays the new Delete CM Data screen that will allow the users to delete any of the following / Contract Manufacturer / Allocations Rules

| ID | WBS | Task | Duration | Start | Finish | Predecessors | Total slack | Free slack | Constraint | Resources | Work |
| --- | --- | --- | --- | --- | --- | --- | --- | --- | --- | --- | --- |
| 55 | 4.1.2.3 | **Allocation process** | 48d | 2017-12-11 | 2018-02-16 |  | 51d |  |  |  | 384h |
| 56 | 4.1.2.3.1 | **CM allocation screen changes** | 25d | 2017-12-11 | 2018-01-15 |  | 51d |  |  |  | 200h |
| 57 | 4.1.2.3.1.1 | Change in screen design as per new template | 10d | 2017-12-11 | 2017-12-22 | 42 | 51d | 0d |  | .Net2 | 80h |
| 58 | 4.1.2.3.1.2 | Validation of data & fields as per new design | 15d | 2017-12-25 | 2018-01-15 | 57 | 51d | 0d |  | .Net2 | 120h |
| 59 | 4.1.2.3.2 | **New screen for Adding rules** | 23d | 2018-01-16 | 2018-02-16 |  | 51d |  |  |  | 184h |
| 60 | 4.1.2.3.2.1 | New screen design | 8d | 2018-01-16 | 2018-01-25 | 58 | 51d | 0d |  | .Net2 | 64h |
| 61 | 4.1.2.3.2.2 | Validation of data and fields | 15d | 2018-01-29 | 2018-02-16 | 60 | 51d | 0d |  | .Net2 | 120h |
| 62 | 4.1.2.4 | **CM deletion process** | 13d | 2017-12-11 | 2017-12-27 |  | 49d |  |  |  | 104h |
| 63 | 4.1.2.4.1 | Design new screen for Deleting CM and its related rules | 6d | 2017-12-11 | 2017-12-18 | 42 | 49d | 0d |  | .Net3 | 48h |
| 64 | 4.1.2.4.2 | Define Deletion Rules process | 7d | 2017-12-19 | 2017-12-27 | 63 | 49d | 0d |  | .Net3 | 56h |
| 65 | 4.1.2.5 | **Screen Changes** | 23d | 2017-12-28 | 2018-01-31 |  | 49d |  |  |  | 184h |
| 66 | 4.1.2.5.1 | Modify Delegates screen to use new tables | 5d | 2017-12-28 | 2018-01-04 | 64 | 49d | 0d |  | .Net3 | 40h |
| 67 | 4.1.2.5.2 | Modify Designate OEM Approver to use new tables | 5d | 2018-01-05 | 2018-01-11 | 66 | 49d | 0d |  | .Net3 | 40h |
| 68 | 4.1.2.5.3 | Allocation Approval Process(Screen design Change) | 10d | 2018-01-12 | 2018-01-25 | 67 | 49d | 0d |  | .Net3 | 80h |
| 69 | 4.1.2.5.4 | Modify the Sales Allocation Review screen to display new reports | 3d | 2018-01-29 | 2018-01-31 | 68 | 49d | 0d |  | .Net3 | 24h |
| 70 | 4.1.2.6 | **Upload Process** | 49d | 2017-12-19 | 2018-02-27 |  | 51d |  | start no earlier than 2017-12-11 |  | 320h |
| 71 | 4.1.2.6.1 | Update exsiting screen for Uploading rule for All BU | 15d | 2017-12-19 | 2018-01-09 | 49 | 51d | 0d |  | .Net4 | 120h |
| 72 | 4.1.2.6.2 | Implement Security changes for Upload rules | 10d | 2018-01-10 | 2018-01-23 | 71 | 51d | 0d |  | .Net4 | 80h |
| 73 | 4.1.2.6.3 | **Implement New upload process** | 24d | 2018-01-24 | 2018-02-27 |  | 51d |  |  |  | 120h |
| 74 | 4.1.2.6.3.1 | New Excel Template in CMA | 7d | 2018-02-19 | 2018-02-27 | 61 | 51d |  |  | .Net2 | 56h |
| 75 | 4.1.2.6.3.2 | Validation of data & fields during upload | 8d | 2018-01-24 | 2018-02-05 | 72 | 51d | 0d |  | .Net4 | 64h |
| 76 | 4.1.2.7 | **Profit center hierarchy Approval** | 10d | 2018-02-01 | 2018-02-14 |  | 49d |  |  |  | 80h |
| 77 | 4.1.2.7.1 | Flexible to absorb changes to profit center hierarchy | 5d | 2018-02-01 | 2018-02-07 | 69 | 49d | 0d |  | .Net3 | 40h |
| 78 | 4.1.2.7.2 | Approval procedure for Business Unit with no code change | 5d | 2018-02-08 | 2018-02-14 | 77 | 49d | 0d |  | .Net3 | 40h |

| ID | WBS | Task | Duration | Start | Finish | Predecessors | Total slack | Free slack | Constraint | Resources | Work |
| --- | --- | --- | --- | --- | --- | --- | --- | --- | --- | --- | --- |
| 79 | 4.1.2.8 | **Download process** | 27d | 2017-12-11 | 2018-01-17 |  | 51d |  | start no earlier than 2017-11-20 |  | 216h |
| 80 | 4.1.2.8.1 | New Master screen for Downloading - Rule/Conflicts | 15d | 2017-12-11 | 2017-12-29 | 42 | 51d | 0d |  | .Net5 | 120h |
| 81 | 4.1.2.8.2 | New screen for Conflict download | 12d | 2018-01-02 | 2018-01-17 | 80 | 51d | 0d |  | .Net5 | 96h |
| 82 | 4.1.2.9 | **CMA Report changes:** | 28d | 2018-01-18 | 2018-02-27 |  | 51d |  |  |  | 288h |
| 83 | 4.1.2.9.1 | **Create 4 new reports for bookings and backlogs** | 27d | 2018-01-18 | 2018-02-26 |  | 49d |  |  |  | 128h |
| 84 | 4.1.2.9.1.1 | Booking Allocation Summary Report | 4d | 2018-02-15 | 2018-02-20 | 78 | 49d | 0d |  | .Net3 | 32h |
| 85 | 4.1.2.9.1.2 | Booking Allocation Detail Report | 4d | 2018-02-21 | 2018-02-26 | 84 | 49d | 0d |  | .Net3 | 32h |
| 86 | 4.1.2.9.1.3 | Backlog Allocation Summary Report | 4d | 2018-01-18 | 2018-01-23 | 81 | 51d | 0d |  | .Net5 | 32h |
| 87 | 4.1.2.9.1.4 | Backlog Allocation Detail Report | 4d | 2018-01-24 | 2018-01-30 | 86 | 51d | 0d |  | .Net5 | 32h |
| 88 | 4.1.2.9.2 | **Modify existing CMA 4 reports** | 20d | 2018-01-31 | 2018-02-27 |  | 51d |  |  |  | 160h |
| 89 | 4.1.2.9.2.1 | Sales Allocation Summary report - Get data from the new tables amd a link to display rules applied to the billing transaction | 5d | 2018-01-31 | 2018-02-06 | 87 | 51d | 0d |  | .Net5 | 40h |
| 90 | 4.1.2.9.2.2 | Sales Allocation detail report - Get data from new tables and add a link to display rules applied to the billing transaction | 5d | 2018-02-07 | 2018-02-13 | 89 | 51d | 0d |  | .Net5 | 40h |
| 91 | 4.1.2.9.2.3 | Contract Manufacturer's Unallocated Sales - Get data from the new tables | 5d | 2018-02-14 | 2018-02-20 | 90 | 51d | 0d |  | .Net5 | 40h |
| 92 | 4.1.2.9.2.4 | Allocatons Split Views - All OEMs, All CMs - Get data from the new tables | 5d | 2018-02-21 | 2018-02-27 | 91 | 51d |  |  | .Net5 | 40h |
| 93 | 4.1.2.10 | **Database Changes** | 58d | 2017-12-08 | 2018-03-01 |  | 49d |  |  |  | 592h |
| 94 | 4.1.2.10.1 | New Table creation Scripts & schema creation (around 30) | 7d | 2017-12-08 | 2017-12-18 | 33 | 51d | 0d |  | ORA | 56h |
| 95 | 4.1.2.10.2 | Create new views and modifying existing views | 5d | 2017-12-19 | 2017-12-25 | 94 | 51d | 0d |  | ORA | 40h |
| 96 | 4.1.2.10.3 | **Database job changes (Daily/Weekly):** | 36d | 2017-12-26 | 2018-02-15 |  | 51d |  |  |  | 288h |
| 97 | 4.1.2.10.3.1 | Create a routine for saving WWAC and Customer rules for Analyzer everytime DND uploads the OEM mapping rule | 2d | 2017-12-26 | 2017-12-27 | 95 | 51d | 0d |  | ORA | 16h |
| 98 | 4.1.2.10.3.2 | Modify routine for AUT/ICT allocation rule change approval process to use the new tables | 2d | 2017-12-28 | 2017-12-29 | 97 | 51d | 0d |  | ORA | 16h |
| 99 | 4.1.2.10.3.3 | Create a daily batch process that will retrieve billings from COSB table | 2d | 2018-01-02 | 2018-01-03 | 98 | 51d | 0d |  | ORA | 16h |
| 100 | 4.1.2.10.3.4 | Create a daily batch process that will retrieve bookings from COSB table | 2d | 2018-01-04 | 2018-01-05 | 99 | 51d | 0d |  | ORA | 16h |
| 101 | 4.1.2.10.3.5 | Create a batch process that will retrieve POS data from GBL POS | 2d | 2018-01-08 | 2018-01-09 | 100 | 51d | 0d |  | ORA | 16h |
| 102 | 4.1.2.10.3.6 | Create a daily batch process that will retrieve backlogs for Delivery Scorecard | 2d | 2018-01-10 | 2018-01-11 | 101 | 51d | 0d |  | ORA | 16h |
| 103 | 4.1.2.10.3.7 | Create a daily batch process that will derive bookings for CMs defined in CMS as buying thru Distribution from OEM Mapping Rules and Resellers table | 2d | 2018-01-12 | 2018-01-15 | 102 | 51d | 0d |  | ORA | 16h |
| 104 | 4.1.2.10.3.8 | Create a daily batch process that will allocate billings for the current month | 2d | 2018-01-16 | 2018-01-17 | 103 | 51d | 0d |  | ORA | 16h |
| 105 | 4.1.2.10.3.9 | Create a daily batch process that will allocate bookings for the current month | 2d | 2018-01-18 | 2018-01-19 | 104 | 51d | 0d |  | ORA | 16h |
| 106 | 4.1.2.10.3.10 | Create a daily batch process that will allocate backlogs for the current month | 2d | 2018-01-22 | 2018-01-23 | 105 | 51d | 0d |  | ORA | 16h |
| 107 | 4.1.2.10.3.11 | Create a daily batch process that will allocate historical data | 2d | 2018-01-24 | 2018-01-25 | 106 | 51d | 0d |  | ORA | 16h |
| 108 | 4.1.2.10.3.12 | Create a weekly batch process that will update GBL CMA with allocated billings from CMA Daily Billings for the current month | 2d | 2018-01-29 | 2018-01-30 | 107 | 51d | 0d |  | ORA | 16h |
| 109 | 4.1.2.10.3.13 | Create a batch process that will update POS bookings with data from CMA Daily Bookings for the current month | 2d | 2018-01-31 | 2018-02-01 | 108 | 51d | 0d |  | ORA | 16h |
| 110 | 4.1.2.10.3.14 | Create a daily batch process that will allocate billings for previous current months, if applicable | 2d | 2018-02-02 | 2018-02-05 | 109 | 51d | 0d |  | ORA | 16h |
| 111 | 4.1.2.10.3.15 | Create a daily batch process that will allocate bookings for previous current months, if applicable | 2d | 2018-02-06 | 2018-02-07 | 110 | 51d | 0d |  | ORA | 16h |
| 112 | 4.1.2.10.3.16 | Create a daily batch process that will allocate backlogs for the current month | 2d | 2018-02-08 | 2018-02-09 | 111 | 51d | 0d |  | ORA | 16h |
| 113 | 4.1.2.10.3.17 | Create a weekly batch process that will update GBL CMA with allocated billings from CMA Daily Billings for previous current months, if applicable | 2d | 2018-02-12 | 2018-02-13 | 112 | 51d | 0d |  | ORA | 16h |
| 114 | 4.1.2.10.3.18 | Create a batch process that will update POS bookings with data from CMA Daily Bookings for previous months, if applicable | 2d | 2018-02-14 | 2018-02-15 | 113 | 51d | 0d |  | ORA | 16h |

| ID | WBS | Task | Duration | Start | Finish | Predecessors | Total slack | Free slack | Constraint | Resources | Work |
| --- | --- | --- | --- | --- | --- | --- | --- | --- | --- | --- | --- |
| 115 | 4.1.2.10.4 | **Control-M Changes** | 10d | 2018-02-16 | 2018-03-01 |  | 49d |  |  |  | 136h |
| 116 | 4.1.2.10.4.1 | Modify the process that copies current month's rules for DNDG BU. It should now be applied to all Bus and will be done monthly (SOLAR#CMPS2500) | 3d | 2018-02-20 | 2018-02-22 | 123 | 51d | 0d | start no earlier than 2017-11-20 | .Net1 | 24h |
| 117 | 4.1.2.10.4.2 | Modify the process that sends notification emails to Sales Engineers and CMA Administrators about unallocated sales. Runs every 14th and 28th of each month. It should now use the new tables (SOLAR#CMPS9000) | 3d | 2018-02-23 | 2018-02-27 | 116 | 51d |  |  | .Net1 | 24h |
| 118 | 4.1.2.10.4.3 | Modify daily processes (SOLAR#CMPS8000) to use the new tables | 3d | 2018-02-27 | 2018-03-01 | 85 | 49d |  |  | .Net3 | 24h |
| 119 | 4.1.2.10.4.4 | Remove the monthly data load process (SOLAR#CMPS2000) | 2d | 2018-02-16 | 2018-02-19 | 114 | 51d | 0d |  | ORA | 16h |
| 120 | 4.1.2.10.4.5 | Remove the monthly indirect sales publish process (SOLAR#CMPS3000) | 2d | 2018-02-20 | 2018-02-21 | 119 | 51d | 0d |  | ORA | 16h |
| 121 | 4.1.2.10.4.6 | Field mapping (COSB, GBL POS, Delivery Scorecard) | 2d | 2018-02-22 | 2018-02-23 | 120 | 51d | 0d |  | ORA | 16h |
| 122 | 4.1.2.10.4.7 | Update CMP sizing sheet for schema size | 2d | 2018-02-26 | 2018-02-27 | 121 | 51d |  |  | ORA | 16h |
| 123 | 4.1.2.10.5 | Backed Off transactions | 9d | 2018-02-07 | 2018-02-19 | 54 | 51d | 0d |  | .Net1 | 72h |
| 124 | 4.1.2.11 | Historical Data Reorganization - DTO Changes | 16d | 2018-02-06 | 2018-02-27 | 75 | 51d |  |  | .Net4 | 128h |
| 125 | 4.1.3 | **Analyser Changes** | 49d | 2017-12-19 | 2018-02-27 |  | 51d |  |  |  | 720h |
| 126 | 4.1.3.1 | **Database changes** | 13d | 2017-12-19 | 2018-01-05 |  | 51d |  |  |  | 184h |
| 127 | 4.1.3.1.1 | (Daily) Create tables for CMA data storage, including booking, billing and backlog. | 4d | 2017-12-19 | 2017-12-22 | 94 | 90d | 0d | start no earlier than 2017-11-13 | Neo Tai | 32h |
| 128 | 4.1.3.1.2 | (Daily) Create tables to keep reorganized data definitions of following dimensions: Region DD1 (Asia + EURO + Amercas) -- Region DD (Asia - JP / KR / Asia exc JPKR) -- Sub Region ( under Region DD1 --> Region DD) -- OEM(provided by CMA) / KAM / Global-Loc | 3d | 2017-12-25 | 2017-12-27 | 127 | 90d | 0d |  | Neo Tai | 24h |
| 129 | 4.1.3.1.3 | (Daily) Base on the design of reports, create dimensions and measures tables for cubes usage | 3d | 2017-12-28 | 2018-01-02 | 128 | 90d |  |  | Neo Tai | 24h |
| 130 | 4.1.3.1.4 | (Weekly) Create tables for CMA data storage, including booking, billing and backlog. | 2d | 2017-12-19 | 2017-12-20 | 94 | 51d | 0d |  | Res5 | 16h |
| 131 | 4.1.3.1.5 | (Weekly) Create tables to keep reorganized data definitions of following dimensions: Region DD1 (Asia + EURO + Amercas) -- Region DD (Asia - JP / KR / Asia exc JPKR) -- Sub Region ( under Region DD1 --> Region DD) -- OEM(provided by CMA) / KAM / Global-Lo | 2d | 2017-12-21 | 2017-12-22 | 130 | 51d | 0d |  | Res5 | 16h |
| 132 | 4.1.3.1.6 | (Weekly) Base on the design of reports, create dimensions and measures tables for cubes usage | 2d | 2017-12-25 | 2017-12-26 | 131 | 51d | 0d |  | Res5 | 16h |
| 133 | 4.1.3.1.7 | (Monthly) Create tables for CMA data storage, including booking, billing and backlog. | 2d | 2017-12-27 | 2017-12-28 | 132 | 51d | 0d |  | Res5 | 16h |
| 134 | 4.1.3.1.8 | (Monthly) Create tables to keep reorganized data definitions of following dimensions: Region DD1 (Asia + EURO + Amercas) -- Region DD (Asia - JP / KR / Asia exc JPKR) -- Sub Region ( under Region DD1 --> Region DD) -- OEM(provided by CMA) / KAM / Global-L | 2d | 2017-12-29 | 2018-01-02 | 133 | 51d | 0d |  | Res5 | 16h |
| 135 | 4.1.3.1.9 | (Monthly) Base on the design of reports, create dimensions and measures tables for cubes usage | 3d | 2018-01-03 | 2018-01-05 | 134 | 51d | 0d |  | Res5 | 24h |
| 136 | 4.1.3.2 | **SSIS - Download Data from CMA** | 17d | 2018-01-08 | 2018-01-31 |  | 51d |  |  |  | 216h |
| 137 | 4.1.3.2.1 | (Daily) Create SSIS task: -- download data from CMA -- reorganize and apply data definitions -- prepare dimensions and measures -- deploy cube | 10d | 2018-01-08 | 2018-01-19 | 135 | 51d | 0d |  | Neo Tai | 80h |
| 138 | 4.1.3.2.2 | (Weekly) Create SSIS task: -- download data from CMA -- reorganize and apply data definitions -- prepare dimensions and measures -- deploy cube | 9d | 2018-01-08 | 2018-01-18 | 135 | 54d | 0d |  | Res5 | 72h |
| 139 | 4.1.3.2.3 | (Monthly) Create SSIS task: -- download data from CMA -- reorganize and apply data definitions -- prepare dimensions and measures -- deploy cube | 8d | 2018-01-19 | 2018-01-31 | 138 | 54d | 0d |  | Res5 | 64h |

| ID | WBS | Task | Duration | Start | Finish | Predecessors | Total slack | Free slack | Resources | Work |
| --- | --- | --- | --- | --- | --- | --- | --- | --- | --- | --- |
| 140 | 4.1.3.3 | **SSAS TASK** | 11d | 2018-01-22 | 2018-02-06 |  | 51d |  |  | 96h |
| 141 | 4.1.3.3.1 | (Daily) Create dimensions and measures based on report design | 4d | 2018-01-22 | 2018-01-25 | 137 | 51d | 0d | Neo Tai | 32h |
| 142 | 4.1.3.3.2 | (Weekly) Create dimensions and measures based on report design | 4d | 2018-02-01 | 2018-02-06 | 139 | 54d | 0d | Res5 | 32h |
| 143 | 4.1.3.3.3 | (Monthly) Create dimensions and measures based on report design | 4d | 2018-01-29 | 2018-02-01 | 141 | 51d | 0d | Neo Tai | 32h |
| 144 | 4.1.3.4 | **Analyzer Reports** | 10d | 2018-02-02 | 2018-02-15 |  | 51d |  |  | 136h |
| 145 | 4.1.3.4.1 | (Daily) Create analytical reports based on top managements' requirements | 7d | 2018-02-07 | 2018-02-15 | 142 | 54d | 0d | Res5 | 56h |
| 146 | 4.1.3.4.2 | (Weekly) Create analytical reports based on top managements' requirements | 5d | 2018-02-02 | 2018-02-08 | 143 | 51d | 0d | Neo Tai | 40h |
| 147 | 4.1.3.4.3 | (Monthly) Create analytical reports based on top managements' requirements | 5d | 2018-02-09 | 2018-02-15 | 146 | 51d | 0d | Neo Tai | 40h |
| 148 | 4.1.3.5 | **SSRS Daily Reports** | 2d | 2018-02-16 | 2018-02-19 |  | 51d |  |  | 32h |
| 149 | 4.1.3.5.1 | (Daily) Create daily reports based on top managements' requirements | 2d | 2018-02-16 | 2018-02-19 | 147 | 51d | 0d | Neo Tai | 16h |
| 150 | 4.1.3.5.2 | (Daily) Create daily report delivery programs | 2d | 2018-02-16 | 2018-02-19 | 145 | 54d | 0d | Res5 | 16h |
| 151 | 4.1.3.6 | **Windows Task Schedulers** | 4d | 2018-02-20 | 2018-02-23 |  | 51d |  |  | 56h |
| 152 | 4.1.3.6.1 | (Daily) Create download and monitoring task schedulers in the windows system | 3d | 2018-02-20 | 2018-02-22 | 150 | 54d |  | Neo Tai | 24h |
| 153 | 4.1.3.6.2 | (Weekly) Create download and monitoring task schedulers in the windows system | 2d | 2018-02-20 | 2018-02-21 | 149 | 51d | 0d | Res5 | 16h |
| 154 | 4.1.3.6.3 | (Monthly) Create download and monitoring task schedulers in the windows system | 2d | 2018-02-22 | 2018-02-23 | 153 | 51d | 0d | Res5 | 16h |
| 155 | 4.1.3.7 | **Update Technical Design Document** | 2d | 2018-02-26 | 2018-02-27 |  | 51d |  |  |  |
| 156 | 4.1.3.7.1 | Analyser Changes | 2d | 2018-02-26 | 2018-02-27 | 154 | 51d |  |  |  |
| 157 | 4.1.4 | **APEX Changes** | 18.26d | 2017-12-19 | 2018-01-15 |  | 81.74d |  |  | 146.08h |
| 158 | 4.1.4.1 | **Control-M** | 1d | 2017-12-19 | 2017-12-19 |  | 81.74d |  |  | 8h |
| 159 | 4.1.4.1.1 | SOLAR#PEXSEXTRACTINDIRECTCMA-EOM | 0.25d | 2017-12-19 | 2017-12-19 | 94 | 81.74d | 0d | Jai | 2h |
| 160 | 4.1.4.1.2 | SOLAR#PEXSEXTRACTINDIRECTCMA-WEEKLY | 0.25d | 2017-12-19 | 2017-12-19 | 159 | 81.74d | 0d | Jai | 2h |
| 161 | 4.1.4.1.3 | SOLAR#PEXSEXTRACTINDIRECTCMA3 | 0.25d | 2017-12-19 | 2017-12-19 | 160 | 81.74d | 0d | Jai | 2h |
| 162 | 4.1.4.1.4 | Restate Indirect Channel Inside – CMA | 0.25d | 2017-12-19 | 2017-12-19 | 161 | 81.74d | 0d | Jai | 2h |
| 163 | 4.1.4.2 | **Oracle** | 9.76d | 2017-12-20 | 2018-01-03 |  | 81.74d |  |  | 78.08h |
| 164 | 4.1.4.2.1 | PEX_EXTRACT_INDIRECT_TRANS_CMA | 2d | 2017-12-20 | 2017-12-21 | 162 | 81.74d | 0d | Jai | 16h |
| 165 | 4.1.4.2.2 | PEX_EXTRACT_INDIRECT_TRANS | 1d | 2017-12-22 | 2017-12-22 | 164 | 81.74d | 0d | Jai | 8h |
| 166 | 4.1.4.2.3 | Restate Indirect Channel Inside | 0.25d | 2017-12-25 | 2017-12-25 | 165 | 81.74d | 0d | Jai | 2h |
| 167 | 4.1.4.2.4 | Restate Indirect Channel Inside - POS | 2d | 2017-12-25 | 2017-12-27 | 166 | 81.74d | 0d | Jai | 16h |
| 168 | 4.1.4.2.5 | Restate Indirect Channel Inside - CMA | 2d | 2017-12-27 | 2017-12-29 | 167 | 81.74d | 0d | Jai | 16h |
| 169 | 4.1.4.2.6 | Export Procedure for Indirect Extract for CMA (Task 2.1) | 0.25d | 2017-12-29 | 2017-12-29 | 168 | 81.74d | 0d | Jai | 2h |
| 170 | 4.1.4.2.7 | Export Procedure for "Restate Indirect Channel Inside - POS" (Task 2.4) | 0.25d | 2017-12-29 | 2017-12-29 | 169 | 81.74d | 0d | Jai | 2h |
| 171 | 4.1.4.2.8 | Export Procedure for "Restate Indirect Channel Inside - CMA" (Task 2.5) | 0.25d | 2017-12-29 | 2017-12-29 | 170 | 81.74d | 0d | Jai | 2h |
| 172 | 4.1.4.2.9 | Pex_Sale_Tran_Cube: CMA_FLAG and CMA_EXCEL_FLAG | 0.25d | 2018-01-02 | 2018-01-02 | 171 | 81.74d | 0d | Jai | 2h |
| 173 | 4.1.4.2.10 | Pex_Indirect_Transaction: CMA_ROWID, DIR_RUN_ID, CMA_ADJUSTED_SPLIT_PCT, SUMAVG_BY_RULE_TYPE_ID, SUM_UP_BY_RULE_TYPE_ID, DELETE_IND, ALLOCATION_RULE_ID_SEQ, SPLIT_PCT_SUM_UP, DIR_TXN_TYPE, DIR_AMT, DIR_QTY, DIR_TXN_ID | 0.25d | 2018-01-02 | 2018-01-02 | 172 | 81.74d | 0d | Jai | 2h |
| 174 | 4.1.4.2.11 | PEX_EXT_INDIRECT_CMA_MONTHLY.pkb (CMA Phase I & II) | 0.25d | 2018-01-02 | 2018-01-02 | 173 | 81.74d | 0d | Jai | 2h |
| 175 | 4.1.4.2.12 | PEX_EXT_INDIRECT_CMA_WEEKLY.pkb (CMA Phase I & II) | 0.25d | 2018-01-02 | 2018-01-02 | 174 | 81.74d | 0d | Jai | 2h |
| 176 | 4.1.4.2.13 | PEX_EXT_INDIRECT_CMA_PHASE3.PKB (CMA Phase III) | 0.25d | 2018-01-03 | 2018-01-03 | 175 | 81.74d | 0d | Jai | 2h |
| 177 | 4.1.4.2.14 | PEX_CMA_PARAMETERS | 0.13d | 2018-01-03 | 2018-01-03 | 176 | 81.74d | 0d | Jai | 1.02h |
| 178 | 4.1.4.2.15 | PEX_PRICING_RULE_TABLE | 0.13d | 2018-01-03 | 2018-01-03 | 177 | 81.74d | 0d | Jai | 1.02h |
| 179 | 4.1.4.2.16 | PEX_PRICING_RULE_TABLE_EXCEL | 0.13d | 2018-01-03 | 2018-01-03 | 178 | 81.74d | 0d | Jai | 1.02h |
| 180 | 4.1.4.2.17 | PEX_INDIRECT_TRANSACTIONS_HIST | 0.13d | 2018-01-03 | 2018-01-03 | 179 | 81.74d | 0d | Jai | 1.02h |

| ID | WBS | Task | Type | Duration | Start | Finish | Predecessors | Total slack | Free slack | Constraint | Resources | Work | Text11 | Text12 |
| --- | --- | --- | --- | --- | --- | --- | --- | --- | --- | --- | --- | --- | --- | --- |
| 181 | 4.1.4.3 | **SQL Server** |  | 1.5d | 2018-01-03 | 2018-01-05 |  | 81.74d |  |  |  | 12h |  |  |
| 182 | 4.1.4.3.1 | removeDCFYCurrent_noBKprice |  | 0.25d | 2018-01-03 | 2018-01-04 | 180 | 81.74d | 0d |  | Jai | 2h |  |  |
| 183 | 4.1.4.3.2 | removeDCFYCurrent_withBKprice |  | 0.25d | 2018-01-04 | 2018-01-04 | 182 | 81.74d | 0d |  | Jai | 2h |  |  |
| 184 | 4.1.4.3.3 | removeDCFYCurrentMinus1_noBKprice |  | 0.25d | 2018-01-04 | 2018-01-04 | 183 | 81.74d | 0d |  | Jai | 2h |  |  |
| 185 | 4.1.4.3.4 | removeDCFYCurrentMinus1_withBKprice |  | 0.25d | 2018-01-04 | 2018-01-04 | 184 | 81.74d | 0d |  | Jai | 2h |  |  |
| 186 | 4.1.4.3.5 | removeDCFYCurrentMinus2_noBKprice |  | 0.25d | 2018-01-04 | 2018-01-05 | 185 | 81.74d | 0d |  | Jai | 2h |  |  |
| 187 | 4.1.4.3.6 | removeDCFYCurrentMinus2_withBKprice |  | 0.25d | 2018-01-05 | 2018-01-05 | 186 | 81.74d | 0d |  | Jai | 2h |  |  |
| 188 | 4.1.4.4 | **APEX UI** |  | 2d | 2018-01-05 | 2018-01-09 |  | 81.74d |  |  |  | 16h |  |  |
| 189 | 4.1.4.4.1 | Dimension name Forecast Type |  | 1d | 2018-01-05 | 2018-01-08 | 187 | 81.74d | 0d |  | Jai | 8h |  |  |
| 190 | 4.1.4.4.2 | Dimension name Rule type |  | 1d | 2018-01-08 | 2018-01-09 | 189 | 81.74d | 0d |  | Jai | 8h |  |  |
| 191 | 4.1.4.5 | Unit Testing |  | 4d | 2018-01-09 | 2018-01-15 | 190 | 81.74d |  | start no earlier than 2017-12-29 | Jai | 32h |  |  |
| 192 | 4.1.5 | **TED Changes** |  | 36d | 2017-12-11 | 2018-01-31 |  | 70d |  |  |  |  |  |  |
| 193 | 4.1.5.1 | TED 1.0 Code change for Distributors Staging Table GBL_DISTRIBUTORS |  | 11.25d | 2017-12-11 | 2017-12-26 | 42 | 70d | 0d | start no earlier than 2017-11-24 |  |  |  |  |
| 194 | 4.1.5.2 | Table structure ( GBL_CMA ) |  | 5.62d | 2017-12-26 | 2018-01-03 | 193, 94 | 70d | 0d | start no earlier than 2017-11-24 |  |  |  |  |
| 195 | 4.1.5.3 | Re Writing existing Programs to reference GBL_CMA and GBL_DISTRIBUTORS |  | 5.62d | 2018-01-03 | 2018-01-11 | 194 | 70d | 0d | start no earlier than 2017-11-24 |  |  |  |  |
| 196 | 4.1.5.4 | New GBL_POS View to Combined Data |  | 5.62d | 2018-01-11 | 2018-01-19 | 195 | 70d | 0d | start no earlier than 2017-11-24 |  |  |  |  |
| 197 | 4.1.5.5 | TED 1.0 Downstream application Testing ( Unit Testing ) |  | 7.88d | 2018-01-19 | 2018-01-31 | 196 | 70d |  | start no earlier than 2017-11-24 |  |  |  |  |
| 198 | 4.1.6 | **Code Review** |  | 17d | 2018-02-05 | 2018-02-27 |  | 8d |  |  |  |  |  |  |
| 199 | 4.1.6.1 | Code Review Signoff |  | 17d | 2018-02-05 | 2018-02-27 |  | 8d | 0d | start no earlier than 2018-02-05 |  |  |  |  |
| 200 | 4.1.7 | Design Test Cases | milestone | 62d | 2017-12-04 | 2018-03-01 | 39 | 49d |  |  | TEST1 | 496h |  |  |
| 201 | 4.2 | **System Integration Testing** |  | 23d | 2018-02-28 | 2018-04-02 |  | 0d |  |  |  | 1152h | project (some) | no |
| 202 | 4.2.1 | **Move for System testing** |  | 1d | 2018-02-28 | 2018-02-28 |  |  |  |  |  | 64h |  |  |
| 203 | 4.2.1.1 | Code Move to QA |  | 1d | 2018-02-28 | 2018-02-28 | 199 | 50d |  | start no earlier than 2017-11-24 |  | 32h |  |  |
| 204 | 4.2.1.2 | Data move to QA |  | 1d | 2018-02-28 | 2018-02-28 | 199 | 8d | 0d | start no earlier than 2017-11-24 |  | 32h |  |  |

| ID | WBS | Task | Type | Duration | Start | Finish | Predecessors | Total slack | Free slack | Constraint | Resources | Work | Text7 | Text12 |
| --- | --- | --- | --- | --- | --- | --- | --- | --- | --- | --- | --- | --- | --- | --- |
| 205 | 4.2.2 | **Cycle 1 Testing** |  | 14d | 2018-03-01 | 2018-03-21 |  | 8d | 0d |  |  | 640h |  |  |
| 206 | 4.2.2.1 | CMA Testing |  | 14d | 2018-03-01 | 2018-03-21 | 204 | 8d |  |  |  | 560h |  |  |
| 207 | 4.2.2.2 | APEX Changes Testing |  | 9d | 2018-03-01 | 2018-03-14 | 204 | 13d |  |  |  |  |  |  |
| 208 | 4.2.2.3 | TED 1.0 Downstream application Testing ( System Testing ) |  | 5d | 2018-03-01 | 2018-03-08 | 204 | 17d |  |  |  |  |  |  |
| 209 | 4.2.2.4 | Analyzer |  | 10d | 2018-03-01 | 2018-03-15 | 204 | 12d |  |  | Neo Tai; Res5 | 80h |  |  |
| 210 | 4.2.3 | **Cycle 2 QA Testing** |  | 7d | 2018-03-22 | 2018-03-30 | 205 | 11d | 0d |  |  | 448h |  |  |
| 211 | 4.2.3.1 | CMA |  | 7d | 2018-03-22 | 2018-03-30 | 205 | 11d |  |  |  | 336h |  |  |
| 212 | 4.2.3.2 | APEX |  | 5d | 2018-03-22 | 2018-03-28 | 205 | 13d |  |  |  |  |  |  |
| 213 | 4.2.3.3 | Analyzer |  | 7d | 2018-03-22 | 2018-03-30 | 205 | 11d |  |  | Neo Tai; Res5 | 112h |  |  |
| 214 | 4.2.3.4 | TED |  | 2d | 2018-03-22 | 2018-03-23 | 205 | 16d |  |  |  |  |  |  |
| 215 | 4.2.4 | **Complete System Testing** |  | 1d | 2018-04-02 | 2018-04-02 | 210 | 11d |  |  |  |  |  |  |
| 216 | 4.2.4.1 | Signoff |  | 1d | 2018-04-02 | 2018-04-02 | 205 | 11d | 0d |  |  |  |  |  |
| 217 | 4.3 | **User acceptance testing** |  | 15d | 2018-04-03 | 2018-04-23 | 205 | 0d |  |  |  | 840h | No | no |
| 218 | 4.3.1 | **Move for User testing** |  | 1d | 2018-04-03 | 2018-04-03 |  | 11d | 0d |  |  | 64h |  |  |
| 219 | 4.3.1.1 | Code Move to UAT |  | 1d | 2018-04-03 | 2018-04-03 | 216 | 11d |  |  | .Net1; .Net2; .Net3; ORA | 32h |  |  |
| 220 | 4.3.1.2 | Data Move to UAT |  | 1d | 2018-04-03 | 2018-04-03 | 216 | 11d |  |  | .Net1; .Net2; .Net3; ORA | 32h |  |  |
| 221 | 4.3.2 | **UAT** |  | 15d | 2018-04-03 | 2018-04-23 |  | 0d |  |  |  | 776h |  |  |
| 222 | 4.3.2.1 | CMA Testing |  | 14d | 2018-04-04 | 2018-04-23 | 218 | 11d |  |  | .Net1; .Net2; .Net3; ORA; TEST1 | 448h |  |  |
| 223 | 4.3.2.2 | APEX Testing |  | 14d | 2018-04-04 | 2018-04-23 | 218 | 11d |  |  | Jai; Sanjeev | 224h |  |  |
| 224 | 4.3.2.3 | **Analyzer Testing** |  | 13d | 2018-04-03 | 2018-04-19 |  | 0d |  |  |  | 104h |  |  |
| 225 | 4.3.2.3.1 | (Daily) Run the task ,deploy cubes and generate reports | manual | 5d | 2018-04-03 | 2018-04-09 | 218 |  |  |  | Neo Tai | 40h |  |  |
| 226 | 4.3.2.3.2 | (Weekly) Run the task ,deploy cubes | manual | 4d | 2018-04-10 | 2018-04-13 | 225 |  |  |  | Neo Tai | 32h |  |  |
| 227 | 4.3.2.3.3 | (Monthly) Run the task ,deploy cubes | manual | 4d | 2018-04-16 | 2018-04-19 | 226 |  |  |  | Neo Tai | 32h |  |  |
| 228 | 4.3.2.4 | **TED Testing** |  | 10d | 2018-04-04 | 2018-04-17 |  | 15d |  |  |  |  |  |  |
| 229 | 4.3.2.4.1 | TED UAT Testing |  | 5d | 2018-04-04 | 2018-04-10 | 218 | 15d | 0d |  |  |  |  |  |
| 230 | 4.3.2.4.2 | Other Down Stream Application Testing |  | 5d | 2018-04-11 | 2018-04-17 | 229 | 15d |  |  |  |  |  |  |
| 231 | 4.4 | Sign off: User Acceptance Testing | milestone | 5d | 2018-04-16 | 2018-04-20 |  | 1d | 0d | start no earlier than 2018-04-16 |  |  |  | no |

| ID | WBS | Task | Type | Duration | Start | Finish | Predecessors | Total slack | Free slack | Constraint | Resources | Work | Text12 | Text11 |
| --- | --- | --- | --- | --- | --- | --- | --- | --- | --- | --- | --- | --- | --- | --- |
| 232 | 4.5 | **Training** |  | 2d | 2018-04-24 | 2018-04-25 |  | 11d |  |  |  | 48h |  |  |
| 233 | 4.5.1 | APEX |  | 2d | 2018-04-24 | 2018-04-25 | 221 | 11d |  | start no earlier than 2018-02-07 | Jai | 16h |  |  |
| 234 | 4.5.2 | Analyzer - Conduct end user training (for BU) |  | 2d | 2018-04-24 | 2018-04-25 | 221 | 11d |  |  | Neo Tai | 16h |  |  |
| 235 | 4.5.3 | CMA |  | 2d | 2018-04-24 | 2018-04-25 | 221 | 11d |  |  |  | 16h |  |  |
| 236 | 4.6 | **Deploy** |  | 14d? | 2018-04-04 | 2018-04-23 |  | 9d |  |  |  | 140h |  |  |
| 237 | 4.6.1 | **Integration** |  | 13d | 2018-04-04 | 2018-04-20 |  | 9d |  |  |  | 100h |  |  |
| 238 | 4.6.1.1 | Cut Over Plan |  | 10d | 2018-04-04 | 2018-04-17 | 218 | 17d |  |  | PM | 80h |  |  |
| 239 | 4.6.1.2 | Change Control Process |  | 5d | 2018-04-16 | 2018-04-20 |  | 1d | 0d | start no earlier than 2018-04-16 | PM [50%] | 20h |  |  |
| 240 | 4.6.2 | **Technical Go Live Deployment - 21st & 22nd Apr** |  | 0d | 2018-04-20 | 2018-04-20 |  | 1d | 0d |  |  |  |  |  |
| 241 | 4.6.2.1 | CMA Code Deployment - Move over the weekend 21st &22nd Apr | milestone | 0d | 2018-04-20 | 2018-04-20 | 231, 239 | 1d |  | start no earlier than 2018-04-20 |  |  |  |  |
| 242 | 4.6.2.2 | APEX - Move over the weekend 21st &22nd Apr | milestone | 0d | 2018-04-20 | 2018-04-20 | 231 | 1d |  |  |  |  |  |  |
| 243 | 4.6.2.3 | Analyser - Move over the weekend 21st &22nd Apr | milestone | 0d | 2018-04-20 | 2018-04-20 | 231 | 1d |  |  |  |  |  |  |
| 244 | 4.6.2.4 | TED over weekend 21st & 22 Apr | milestone | 0d | 2018-04-20 | 2018-04-20 | 231 | 1d | 0d |  |  |  |  |  |
| 245 | 4.6.3 | Go Live - CMA Redesign Project |  | 1d? | 2018-04-23 | 2018-04-23 | 244 | 13d |  |  |  |  |  |  |
| 246 | 4.6.4 | **Post Live assessment** |  | 1d | 2018-04-23 | 2018-04-23 |  | 13d |  |  |  | 40h |  |  |
| 247 | 4.6.4.1 | CMA | milestone | 1d | 2018-04-23 | 2018-04-23 | 240 | 13d |  |  |  | 32h |  |  |
| 248 | 4.6.4.2 | TED |  | 1d | 2018-04-23 | 2018-04-23 | 240 | 13d |  |  |  |  |  |  |
| 249 | 4.6.4.3 | Analyzer Post Go Live Assessment |  | 1d | 2018-04-23 | 2018-04-23 | 240 | 13d |  |  | Neo Tai | 8h |  |  |
| 250 | 4.6.4.4 | APEX |  | 1d | 2018-04-23 | 2018-04-23 | 240 | 13d |  |  |  |  |  |  |
| 251 | 4.7 | **Hypercare** |  | 10d | 2018-04-23 | 2018-05-07 |  | 1d | 0d |  |  | 240h | yes |  |
| 252 | 4.7.1 | CMA Support |  | 10d | 2018-04-23 | 2018-05-07 | 240 | 1d |  |  | ORA; .Net2 | 160h |  |  |
| 253 | 4.7.2 | Analyzer Support |  | 10d | 2018-04-23 | 2018-05-07 | 240 | 1d |  |  |  |  |  |  |
| 254 | 4.7.3 | TED Support |  | 10d | 2018-04-23 | 2018-05-07 | 240 | 1d |  |  |  |  |  |  |
| 255 | 4.7.4 | APEX-Post deployment support |  | 10d | 2018-04-23 | 2018-05-07 | 240 | 1d |  |  | Jai | 80h |  |  |
| 256 | 4.16 | Post Implementation Design Review Complete (if applicable) |  | 1d | 2018-05-07 | 2018-05-07 | 251FF | 1d | 0d |  |  |  | no | project (some) |
| 257 | 4.9 | Execute phase complete | milestone | 0d | 2018-05-07 | 2018-05-07 | 256 | 1d | 0d |  |  |  | yes |  |

Notes:
- 256: REVIEW

| ID | WBS | Task | Type | Duration | Start | Finish | Predecessors | Total slack | Free slack | Resources | Work | Text12 |
| --- | --- | --- | --- | --- | --- | --- | --- | --- | --- | --- | --- | --- |
| 258 | 5 | **Close** |  | 3d | 2018-05-07 | 2018-05-10 |  | 1d |  |  | 113h | yes |
| 259 | 5.1.2 | Sign off: Project Complete | milestone | 0d | 2018-05-07 | 2018-05-07 | 257 | 2d | 1d | PM |  | yes |
| 260 | 5.3 | **Knowledge Management** |  | 3d | 2018-05-08 | 2018-05-10 |  | 1d |  |  | 72h | yes |
| 261 | 5.2.1 | Perform knowledge transfer |  | 0.67d | 2018-05-08 | 2018-05-08 | 257 | 1d | 0d | ORA; .Net2; PM | 16h | yes |
| 262 | 5.3.1 | Verify that final version of each project artifact has been published |  | 0.33d | 2018-05-08 | 2018-05-08 | 261 | 1d | 0d | ORA; .Net2; PM | 8h | yes |
| 263 | 5.3.2 | Conduct Lessons Learned session |  | 2d | 2018-05-09 | 2018-05-10 | 261, 262, 259, 267 | 1d |  | ORA; .Net2; PM | 48h | yes |
| 264 | 5.2 | **Project Closure Activities** |  | 1d | 2018-05-08 | 2018-05-08 |  | 1d |  |  | 41h | yes |
| 265 | 5.2.1 | Confirm all invoices received and submitted for payment |  | 1d | 2018-05-08 | 2018-05-08 | 251 | 3d |  | PM | 8h | yes |
| 266 | 5.2.2 | Complete capitalization form (if applicable) |  | 1d | 2018-05-08 | 2018-05-08 | 251 | 3d |  | PM | 8h | no |
| 267 | 5.2.3 | Verify financial closure |  | 1d | 2018-05-08 | 2018-05-08 | 251 | 1d | 0d | PM | 8h | yes |
| 268 | 5.2.4 | Confirm all work completed and duration of all tasks is zero |  | 1d | 2018-05-08 | 2018-05-08 | 251 | 3d |  | PM [12.5%] | 1h | yes |
| 269 | 5.2.5 | Set forecast for future months to zero in Portfolio Server |  | 1d | 2018-05-08 | 2018-05-08 | 251 | 3d |  | PM | 8h | yes |
| 270 | 5.2.6 | Update status of project to closed |  | 1d | 2018-05-08 | 2018-05-08 | 251 | 3d |  | PM | 8h | yes |
| 271 | 6 | PROJECT COMPLETE | milestone | 0d | 2018-05-07 | 2018-05-07 | 251 | 4d |  |  |  | yes |
